# 健身训练与饮食管理系统（FTDMS）项目计划

How a schedule from GanttProject changed from version to version. A marks actual dates.

## Version 1 (saved 2026-11-07)

Note of the change: docs: 新增项目计划甘特图（GanttProject .gan + PNG/SVG 预览）

| ID | WBS | Task | Duration | Start | Finish | Predecessors |
| --- | --- | --- | --- | --- | --- | --- |
| 1 | 1 | **1 可行性分析** | 14d | 2026-09-28 | 2026-10-11 |  |
| 2 |  | 1.1 分析准备与候选方案论证 | 3d | 2026-09-28 | 2026-09-30 |  |
| 3 |  | 1.2 技术可行性分析 | 3d | 2026-10-01 | 2026-10-03 | 2 |
| 4 |  | 1.3 经济可行性分析 | 2d | 2026-10-01 | 2026-10-02 | 2 |
| 5 |  | 1.4 实施可行性分析 | 2d | 2026-10-02 | 2026-10-03 | 2 |
| 6 |  | 1.5 风险识别与评价 | 2d | 2026-10-04 | 2026-10-05 | 3, 4, 5 |
| 7 |  | 1.6 FAR 编制与评审 | 6d | 2026-10-06 | 2026-10-11 | 6 |
| 8 |  | M1 需求与技术方案冻结 | 0d | 2026-10-11 | 2026-10-11 |  |
| 9 | 2 | **2 需求分析** | 35d | 2026-09-28 | 2026-11-01 |  |
| 10 |  | 2.1 需求调研 | 4d | 2026-09-28 | 2026-10-01 |  |
| 11 |  | 2.2 需求收集 | 4d | 2026-10-02 | 2026-10-05 | 10 |
| 12 |  | 2.3 需求整理 | 4d | 2026-10-06 | 2026-10-09 | 11 |
| 13 |  | 2.4 需求分析 | 8d | 2026-10-10 | 2026-10-17 | 12 |
| 14 |  | 2.5 需求文档编写（第一阶段） | 4d | 2026-10-18 | 2026-10-21 | 13 |
| 15 |  | 2.6 SRS 国标版编写 | 7d | 2026-10-22 | 2026-10-28 | 14 |
| 16 |  | 2.7 原型走查与需求评审确认 | 4d | 2026-10-29 | 2026-11-01 | 15 |
| 17 | 3 | **3 数据层与后端核心** | 21d | 2026-10-05 | 2026-10-25 |  |
| 18 |  | 3.1 建表与索引 | 3d | 2026-10-05 | 2026-10-07 |  |
| 19 |  | 3.2 鉴权与账户 | 3d | 2026-10-08 | 2026-10-10 | 18 |
| 20 |  | 3.3 每日目标 | 2d | 2026-10-11 | 2026-10-12 | 19 |
| 21 |  | 3.4 训练计划与记录 | 3d | 2026-10-13 | 2026-10-15 | 20 |
| 22 |  | 3.5 饮食与营养换算 | 3d | 2026-10-16 | 2026-10-18 | 21 |
| 23 |  | 3.6 体重 | 2d | 2026-10-19 | 2026-10-20 | 22 |
| 24 |  | 3.7 统计 | 2d | 2026-10-21 | 2026-10-22 | 23 |
| 25 |  | 3.8 后台管理 | 3d | 2026-10-23 | 2026-10-25 | 24 |
| 26 |  | M2 后端核心接口可联调 | 0d | 2026-10-25 | 2026-10-25 |  |
| 27 | 4 | **4 前端页面与图表** | 21d | 2026-10-19 | 2026-11-08 |  |
| 28 |  | 4.1 登录与设置 | 4d | 2026-10-19 | 2026-10-22 |  |
| 29 |  | 4.2 训练饮食录入 | 5d | 2026-10-23 | 2026-10-27 | 28 |
| 30 |  | 4.3 体重记录 | 3d | 2026-10-28 | 2026-10-30 | 29 |
| 31 |  | 4.4 统计图表 | 5d | 2026-10-31 | 2026-11-04 | 30 |
| 32 |  | 4.5 后台管理页 | 4d | 2026-11-05 | 2026-11-08 | 31 |
| 33 |  | M3 Web 端全流程可用 | 0d | 2026-11-08 | 2026-11-08 |  |
| 34 | 5 | **5 AI 分析模块** | 21d | 2026-11-09 | 2026-11-29 |  |
| 35 |  | 5.1 授权与撤回 | 4d | 2026-11-09 | 2026-11-12 |  |
| 36 |  | 5.2 数据汇总与摘要 | 4d | 2026-11-13 | 2026-11-16 | 35 |
| 37 |  | 5.3 模型接入 | 5d | 2026-11-17 | 2026-11-21 | 36 |
| 38 |  | 5.4 报告生成与历史 | 4d | 2026-11-22 | 2026-11-25 | 37 |
| 39 |  | 5.5 一致性核对与降级 | 4d | 2026-11-26 | 2026-11-29 | 38 |
| 40 |  | M4 AI 分析全链路打通 | 0d | 2026-11-29 | 2026-11-29 |  |
| 41 | 6 | **6 移动端 Android 封装** | 17d | 2026-11-16 | 2026-12-02 |  |
| 42 |  | 6.1 手机布局适配 | 6d | 2026-11-16 | 2026-11-21 |  |
| 43 |  | 6.2 Capacitor 工程与空壳包 | 6d | 2026-11-22 | 2026-11-27 | 42 |
| 44 |  | 6.3 打包与真机调试 | 5d | 2026-11-28 | 2026-12-02 | 43 |
| 45 |  | M5 最初成品可用 | 0d | 2026-12-02 | 2026-12-02 |  |
| 46 | 7 | **7 集成测试与验收** | 18d | 2026-12-03 | 2026-12-20 |  |
| 47 |  | 7.1 功能用例 | 6d | 2026-12-03 | 2026-12-08 |  |
| 48 |  | 7.2 跨账号与隐私验收 | 4d | 2026-12-09 | 2026-12-12 | 47 |
| 49 |  | 7.3 缺陷复测 | 4d | 2026-12-13 | 2026-12-16 | 48 |
| 50 |  | 7.4 性能检查 | 4d | 2026-12-17 | 2026-12-20 | 49 |
| 51 |  | M6 测试验收通过 | 0d | 2026-12-20 | 2026-12-20 |  |
| 52 | 8 | **8 验收答辩** | 10d | 2026-12-21 | 2026-12-30 |  |
| 53 |  | 8.1 使用说明与部署文档 | 4d | 2026-12-21 | 2026-12-24 |  |
| 54 |  | 8.2 答辩材料 | 4d | 2026-12-25 | 2026-12-28 | 53 |
| 55 |  | 8.3 演示准备与归档 | 2d | 2026-12-29 | 2026-12-30 | 54 |
| 56 |  | M7 结项答辩完成 | 0d | 2026-12-30 | 2026-12-30 |  |

## Version 2 (saved 2026-11-07)

Note of the change: docs(ppt): 每页统一 logo 角标；修正甘特图里程碑编码

Last finish stays 2026-12-30.

Changed:

| ID | Task | Start | Finish |
| --- | --- | --- | --- |
| 5 | 1.4 实施可行性分析 | 2026-10-02 → 2026-10-01 (-1d) | 2026-10-03 → 2026-10-02 (-1d) |

## Version 3 (saved 2026-11-14)

Note of the change: docs: 新增总体设计报告 V1.0，SDP 升 V1.9 并同步 WBS 与甘特图

Last finish stays 2026-12-30.

Added:

| ID | Task | Duration | Start | Finish | Predecessors | Resources |
| --- | --- | --- | --- | --- | --- | --- |
| 57 | **9 总体设计报告与设计基线** | 9d | 2026-11-14 | 2026-11-22 |  |  |
| 58 | 9.1 设计输入复核与追踪 | 1d | 2026-11-14 | 2026-11-14 |  | 方文锦 |
| 59 | 9.2 总体设计 | 2d | 2026-11-15 | 2026-11-16 | 58 | 方文锦 |
| 60 | 9.3 详细设计 | 2d | 2026-11-17 | 2026-11-18 | 59 | 方文锦; 陈智杰 |
| 61 | 9.4 测试文档 | 2d | 2026-11-19 | 2026-11-20 | 60 | 陈智杰 |
| 62 | 9.5 用户文档 | 2d | 2026-11-19 | 2026-11-20 | 60 | 陈智杰 |
| 63 | 9.6 计划/WBS/甘特图一致性核对 | 1d | 2026-11-21 | 2026-11-21 | 61, 62 | 方文锦 |
| 64 | 9.7 设计评审与基线发布 | 1d | 2026-11-22 | 2026-11-22 | 63 | 方文锦; 陈智杰 |
| 65 | D1 设计文档基线 | 0d | 2026-11-22 | 2026-11-22 | 64SS | 方文锦 [0%]; 陈智杰 [0%] |
